# AccuTrack SCADA

Schedule from ProjectLibre, 2025-12-22 to 2026-12-25.

## Calendars

- Standard: Mon-Fri 08:00-12:00, 13:00-17:00; Sat-Sun off.

## Resources

| Resource | Notes |
| --- | --- |
| Unassigned |  |
| 1. HARDWARE RESOURCES |  |
| 1.1 Development & Test Hardware (Core) |  |
| 1.1.1 Embedded HMI Target Platform | Rationale: Two units allow destructive testing, long-run reliability testing, and safe OS experiments. |
| Raspberry Pi 5 (preferred) or Pi 4 | ≥8 GB RAM 2 pieces Primary HMI + backup |
| Industrial SD Card | ≥64 GB, A2-rated 2 OS & runtime |
| Power Supply | 5V, ≥5A 2 Stable operation |
| Passive / Active Cooling | Industrial rated 2 Thermal stability |
| 1.1.2 HMI Display & Input |  |
| Touch Display |  |
| Touch Interface |  |
| Optional USB Keyboard/Mouse | Basic |
| 1.1.3 Industrial Communication Test Equipment | If PLC is unavailable: Software PLC (OpenPLC) OPC UA simulator |
| PLC (entry-level) | Modbus TCP / OPC UA 1 Comm testing |
| Managed Ethernet Switch | VLAN capable 1 Network simulation |
| Ethernet Cables | Cat6 Several Lab setup |
| 1.1.4 Reliability & Power Testing |  |
| USB Power Meter | Voltage/current logging 1 |
| UPS (small) | 5–15 min runtime 1 |
| External Temperature Sensor | USB/I2C 1 |
| 1.2 Development Workstation Hardware |  |
| CPU | 6 cores 8–12 cores |
| RAM | 16 GB 32 GB |
| Storage | 512 GB SSD 1 TB NVMe |
| GPU | Optional Helpful for Qt/QML |
| 2. SOFTWARE RESOURCES |  |
| 2.1 Operating Systems |  |
| 2.1.1 Development OS |  |
| Ubuntu 22.04 / 24.04 LTS (primary) |  |
| Windows 10/11 (secondary, optional) |  |
| 2.1.2 Embedded OS (HMI) | Recommendation: Start with Raspberry Pi OS Lite Migrate to Buildroot during Phase 5 |
| Raspberry Pi OS Lite | Fast prototyping |
| Buildroot | Production-grade |
| Yocto | Long-term industrial scalability |
| 2.2 Core Development Toolchain |  |
| 2.2.1 Qt Stack (Critical) |  |
| Qt 6.x (LTS preferred) |  |
| Qt Creator |  |
| Qt QML / Quick |  |
| Qt Network |  |
| Qt SerialBus |  |
| Qt OPC UA |  |
| 2.2.2 Cross-Compilation Toolchain |  |
| GCC ARM64 toolchain |  |
| CMake |  |
| Ninja |  |
| 2.3 Communication & Industrial Protocols |  |
| libmodbus / Qt SerialBus |  |
| Qt OPC UA |  |
| Wireshark |  |
| OpenPLC |  |
| 2.4 Data & Storage |  |
| SQLite |  |
| JSON / YAML |  |
| Flatbuffers / Protobuf (optional) |  |
| 2.5 Designer-Specific Software Resources |  |
| QML Scene Graph |  |
| Custom Property Editor |  |
| Undo/Redo Stack |  |
| File serialization layer |  |
| 2.6 Runtime-Specific Software Resources |  |
| Watchdog (systemd) |  |
| Systemd services |  |
| EGLFS / DRM backend |  |
| Framebuffer backend |  |
| 2.7 Testing & Quality Tools |  |
| GoogleTest / Catch2 |  |
| Valgrind |  |
| perf / top |  |
| Stress-ng |  |
| 2.8 Documentation & Planning |  |
| ProjectLibre |  |
| PlantUML |  |
| Markdown |  |
| Doxygen |  |
| 3. OPTIONAL / FUTURE INDUSTRIALIZATION RESOURCES |  |
| Cybersecurity |  |
| Safety |  |
| Remote updates |  |
| Redundancy |  |

## Schedule

| ID | WBS | Task | Type | Duration | Start | Finish | Predecessors | Constraint | Deadline |
| --- | --- | --- | --- | --- | --- | --- | --- | --- | --- |
| 1 | 1 | **Accutrack SCADA** |  | 265d? | 2025-12-22 | 2026-12-25 |  |  |  |
| 3 | 1.1 | **PHASE 1 – Project Foundations & Architecture** |  | 18d? | 2025-12-22 | 2026-01-14 |  |  |  |
| 4 | 1.1.1 | **1.1 Requirements Definition** |  | 5d | 2025-12-22 | 2025-12-26 |  |  |  |
| 5 | 1.1.1.1 | Define SCADA scope (tags, alarms, trends, scripts, users) |  | 2d | 2025-12-22 | 2025-12-23 |  |  |  |
| 6 | 1.1.1.2 | Define non-functional requirements (performance, determinism, boot time) |  | 2d | 2025-12-24 | 2025-12-25 | 5 |  |  |
| 7 | 1.1.1.3 | Output: Requirements Specification |  | 1d | 2025-12-26 | 2025-12-26 | 6 |  |  |
| 8 | 1.1.2 | **1.2 System Architecture Design** |  | 5d | 2025-12-29 | 2026-01-02 |  |  |  |
| 9 | 1.1.2.1 | Layered architecture (Designer ↔ Runtime ↔ Hardware) |  | 2d | 2025-12-29 | 2025-12-30 | 7 |  |  |
| 10 | 1.1.2.2 | Module boundaries and interfaces |  | 2d | 2025-12-31 | 2026-01-01 | 9 |  |  |
| 11 | 1.1.2.3 | Plugin/extensibility model |  | 1d | 2026-01-02 | 2026-01-02 | 10 |  |  |
| 12 | 1.1.3 | **Data & Configuration Models** |  | 5d? | 2026-01-05 | 2026-01-09 |  |  |  |
| 13 | 1.1.3.1 | Project file format (JSON / SQLite / custom) |  | 2d | 2026-01-05 | 2026-01-06 | 11 |  |  |
| 14 | 1.1.3.2 | Tag model (analog, digital, derived) |  | 2d | 2026-01-07 | 2026-01-08 | 13 |  |  |
| 15 | 1.1.3.3 | Alarm & event schema |  | 1d? | 2026-01-09 | 2026-01-09 | 14 |  |  |
| 16 | 1.1.4 | **Toolchain & DevOps Setup** |  | 3d? | 2026-01-12 | 2026-01-14 |  |  |  |
| 17 | 1.1.4.1 | Qt version lock |  | 1d? | 2026-01-12 | 2026-01-12 | 15 |  |  |
| 18 | 1.1.4.2 | Cross-compile toolchain for Raspberry Pi |  | 1d? | 2026-01-13 | 2026-01-13 | 17 |  |  |
| 19 | 1.1.4.3 | Git repo structure |  | 1d? | 2026-01-14 | 2026-01-14 | 18 |  |  |
| 21 | 1.1.5 | Milestone: Architecture Baseline Approved | milestone | 0d | 2026-01-14 | 2026-01-14 | 19 | finish no later than 2026-02-02 | 2026-01-31 |
| 23 | 1.2 | **PHASE 2 – Core Platform & Communication Layer** |  | 41d? | 2026-01-15 | 2026-03-12 |  |  |  |
| 24 | 1.2.1 | **2.1 Communication Abstraction Layer** |  | 32d? | 2026-01-15 | 2026-02-27 |  |  |  |
| 25 | 1.2.1.1 | Protocol abstraction (driver model) |  | 5d | 2026-01-15 | 2026-01-21 | 21 |  |  |
| 26 | 1.2.1.2 | **Initial protocols:** |  | 26d | 2026-01-22 | 2026-02-26 |  |  |  |
| 27 | 1.2.1.2.1 | Implement protocol driver framework |  | 10d | 2026-01-22 | 2026-02-04 | 25 |  |  |
| 28 | 1.2.1.2.2 | Modbus TCP |  | 8d | 2026-02-05 | 2026-02-16 | 27 |  |  |
| 29 | 1.2.1.2.3 | OPC UA (client) |  | 8d | 2026-02-17 | 2026-02-26 | 28 |  |  |
| 30 | 1.2.1.3 | Threading & async IO model |  | 1d? | 2026-02-27 | 2026-02-27 | 29 |  |  |

Notes:
- 3: 01 Jan – 31 Jan 2026 (4 weeks) Goal: Lock down architecture, technology stack, and system contracts.
- 23: 01 Feb – 31 Mar 2026 (8 weeks) Goal: Shared backbone usable by Designer, Runtime, and Hardware.

| ID | WBS | Task | Type | Duration | Start | Finish | Predecessors | Constraint | Deadline |
| --- | --- | --- | --- | --- | --- | --- | --- | --- | --- |
| 31 | 1.2.2 | **2.2 Runtime-Independent Data Engine** |  | 5d? | 2026-03-02 | 2026-03-06 |  |  |  |
| 32 | 1.2.2.1 | Tag registry |  | 2d | 2026-03-02 | 2026-03-03 | 30 |  |  |
| 33 | 1.2.2.2 | Scan cycles |  | 2d | 2026-03-04 | 2026-03-05 | 32 |  |  |
| 34 | 1.2.2.3 | Value caching & timestamps |  | 1d? | 2026-03-06 | 2026-03-06 | 33 |  |  |
| 35 | 1.2.3 | **2.3 Designer ↔ Runtime Contract** |  | 2d? | 2026-03-09 | 2026-03-10 |  |  |  |
| 36 | 1.2.3.1 | Project export/import |  | 1d? | 2026-03-09 | 2026-03-09 | 34 |  |  |
| 37 | 1.2.3.2 | Versioned compatibility checks |  | 1d? | 2026-03-10 | 2026-03-10 | 36 |  |  |
| 38 | 1.2.4 | **2.4 Communication Validation** |  | 2d? | 2026-03-11 | 2026-03-12 |  |  |  |
| 39 | 1.2.4.1 | Simulator-based testing |  | 1d? | 2026-03-11 | 2026-03-11 | 37 |  |  |
| 40 | 1.2.4.2 | Runtime & Designer using same drivers |  | 1d? | 2026-03-12 | 2026-03-12 | 39 |  |  |
| 42 | 1.2.5 | Milestone: Unified Communication Layer Functional | milestone | 0d | 2026-03-12 | 2026-03-12 | 40 | finish no later than 2026-03-31 | 2026-03-31 |
| 44 | 1.3 | **PHASE 3 – Designer (SCADA Design Software)** |  | 63d | 2026-03-13 | 2026-06-09 |  |  |  |
| 45 | 1.3.1 | **3.1 Designer Application Framework** |  | 12d | 2026-03-13 | 2026-03-30 |  |  |  |
| 46 | 1.3.1.1 | Qt C++ backend |  | 5d | 2026-03-13 | 2026-03-19 | 42 |  |  |
| 47 | 1.3.1.2 | QML UI shell |  | 2d | 2026-03-20 | 2026-03-23 | 46 |  |  |
| 48 | 1.3.1.3 | Project management (new/open/save) |  | 5d | 2026-03-24 | 2026-03-30 | 47 |  |  |
| 49 | 1.3.2 | **3.2 HMI Screen Designer** |  | 22d | 2026-03-31 | 2026-04-29 |  |  |  |
| 50 | 1.3.2.1 | Canvas system |  | 10d | 2026-03-31 | 2026-04-13 | 48 |  |  |
| 51 | 1.3.2.2 | Drag/drop widgets |  | 10d | 2026-04-14 | 2026-04-27 | 50 |  |  |
| 52 | 1.3.2.3 | Grid, snapping, alignment |  | 2d | 2026-04-28 | 2026-04-29 | 51 |  |  |
| 53 | 1.3.3 | **3.3 Widget Library** |  | 10d | 2026-04-30 | 2026-05-13 |  |  |  |
| 54 | 1.3.3.1 | Basic widgets (labels, buttons, indicators) |  | 3d | 2026-04-30 | 2026-05-04 | 52 |  |  |
| 55 | 1.3.3.2 | Dynamic binding to tags |  | 3d | 2026-05-05 | 2026-05-07 | 54 |  |  |
| 56 | 1.3.3.3 | Property inspector |  | 4d | 2026-05-08 | 2026-05-13 | 55 |  |  |

Notes:
- 44: 01 Apr – 30 Jun 2026 (13 weeks) Goal: Fully usable SCADA project authoring environment.

| ID | WBS | Task | Type | Duration | Start | Finish | Predecessors | Constraint | Deadline |
| --- | --- | --- | --- | --- | --- | --- | --- | --- | --- |
| 57 | 1.3.4 | **3.4 Tag & Alarm Configuration UI** |  | 14d | 2026-05-14 | 2026-06-02 |  |  |  |
| 58 | 1.3.4.1 | Tag browser |  | 7d | 2026-05-14 | 2026-05-22 | 56 |  |  |
| 59 | 1.3.4.2 | Alarm setup (limits, severity) |  | 5d | 2026-05-25 | 2026-05-29 | 58 |  |  |
| 60 | 1.3.4.3 | Validation rules |  | 2d | 2026-06-01 | 2026-06-02 | 59 |  |  |
| 61 | 1.3.5 | **3.5 Designer Preview Mode** |  | 5d | 2026-06-03 | 2026-06-09 |  |  |  |
| 62 | 1.3.5.1 | Simulated runtime execution |  | 3d | 2026-06-03 | 2026-06-05 | 60 |  |  |
| 63 | 1.3.5.2 | Live tag updates via comm layer |  | 2d | 2026-06-08 | 2026-06-09 | 62 |  |  |
| 65 | 1.3.6 | Milestone: Designer MVP Complete | milestone | 0d | 2026-06-09 | 2026-06-09 | 63 | finish no later than 2026-06-30 | 2026-06-30 |
| 67 | 1.4 | **PHASE 4 – Runtime (SCADA Runtime Software)** |  | 75d? | 2026-06-10 | 2026-09-22 |  |  |  |
| 68 | 1.4.1 | **4.1 Runtime Core Engine** |  | 14d? | 2026-06-10 | 2026-06-29 |  |  |  |
| 69 | 1.4.1.1 | Startup sequence |  | 8d | 2026-06-10 | 2026-06-19 | 65 |  |  |
| 70 | 1.4.1.2 | Project loading |  | 5d | 2026-06-22 | 2026-06-26 | 69 |  |  |
| 71 | 1.4.1.3 | State management |  | 1d? | 2026-06-29 | 2026-06-29 | 70 |  |  |
| 72 | 1.4.2 | **4.2 Rendering Engine** |  | 18d | 2026-06-30 | 2026-07-23 |  |  |  |
| 73 | 1.4.2.1 | QML runtime renderer |  | 12d | 2026-06-30 | 2026-07-15 | 71 |  |  |
| 74 | 1.4.2.2 | Screen navigation |  | 6d | 2026-07-16 | 2026-07-23 | 73 |  |  |
| 75 | 1.4.3 | **4.3 Alarm & Event Engine** |  | 17d? | 2026-07-24 | 2026-08-17 |  |  |  |
| 76 | 1.4.3.1 | Alarm detection |  | 10d | 2026-07-24 | 2026-08-06 | 74 |  |  |
| 77 | 1.4.3.2 | Acknowledgment |  | 6d | 2026-08-07 | 2026-08-14 | 76 |  |  |
| 78 | 1.4.3.3 | Event history |  | 1d? | 2026-08-17 | 2026-08-17 | 77 |  |  |
| 79 | 1.4.4 | **4.4 Trend & History Engine** |  | 10d | 2026-08-18 | 2026-08-31 |  |  |  |
| 80 | 1.4.4.1 | Time-series logging |  | 4d | 2026-08-18 | 2026-08-21 | 78 |  |  |
| 81 | 1.4.4.2 | Circular buffers |  | 3d | 2026-08-24 | 2026-08-26 | 80 |  |  |
| 82 | 1.4.4.3 | Export functions |  | 3d | 2026-08-27 | 2026-08-31 | 81 |  |  |

Notes:
- 67: 01 Apr – 31 Jul 2026 (17 weeks) Goal: Deterministic, stable execution engine.

| ID | WBS | Task | Type | Duration | Start | Finish | Predecessors | Constraint | Deadline |
| --- | --- | --- | --- | --- | --- | --- | --- | --- | --- |
| 83 | 1.4.5 | **4.5 Runtime Stability & Watchdog** |  | 16d? | 2026-09-01 | 2026-09-22 |  |  |  |
| 84 | 1.4.5.1 | Crash recovery |  | 1d? | 2026-09-01 | 2026-09-01 | 82 |  |  |
| 85 | 1.4.5.2 | Deterministic scan timing |  | 1d? | 2026-09-02 | 2026-09-02 | 84 |  |  |
| 86 | 1.4.5.3 | Performance optimization |  | 14d | 2026-09-03 | 2026-09-22 | 85 |  |  |
| 88 | 1.4.6 | Milestone: Runtime Feature-Complete | milestone | 1d? | 2026-07-30 | 2026-07-30 | 86 | finish no later than 2026-07-31 | 2026-07-31 |
| 90 | 1.5 | **PHASE 5 – Hardware Platform** |  | 53d? | 2026-07-31 | 2026-10-13 |  |  |  |
| 91 | 1.5.1 | **5.1 Raspberry Pi Platform Selection** |  | 5d | 2026-07-31 | 2026-08-06 |  |  |  |
| 92 | 1.5.1.1 | Model selection |  | 2d | 2026-07-31 | 2026-08-03 | 88 |  |  |
| 93 | 1.5.1.2 | Display & IO considerations |  | 3d | 2026-08-04 | 2026-08-06 | 92 |  |  |
| 94 | 1.5.2 | **5.2 Linux OS & Kiosk Setup** |  | 18d | 2026-08-07 | 2026-09-01 |  |  |  |
| 95 | 1.5.2.1 | Minimal Linux |  | 6d | 2026-08-07 | 2026-08-14 | 93 |  |  |
| 96 | 1.5.2.2 | Systemd services |  | 6d | 2026-08-17 | 2026-08-24 | 95 |  |  |
| 97 | 1.5.2.3 | Auto-start runtime |  | 6d | 2026-08-25 | 2026-09-01 | 96 |  |  |
| 98 | 1.5.3 | **5.3 Cross-Compilation & Optimization** |  | 10d? | 2026-09-02 | 2026-09-15 |  |  |  |
| 99 | 1.5.3.1 | ARM builds |  | 5d | 2026-09-02 | 2026-09-08 | 97 |  |  |
| 100 | 1.5.3.2 | GPU acceleration (if applicable) |  | 1d? | 2026-09-09 | 2026-09-09 | 99 |  |  |
| 101 | 1.5.3.3 | Boot time tuning |  | 4d | 2026-09-10 | 2026-09-15 | 100 |  |  |
| 102 | 1.5.4 | **5.4 Hardware Validation** |  | 20d | 2026-09-16 | 2026-10-13 |  |  |  |
| 103 | 1.5.4.1 | Thermal testing |  | 10d | 2026-09-16 | 2026-09-29 | 101 |  |  |
| 104 | 1.5.4.2 | Power-cycle recovery |  | 5d | 2026-09-30 | 2026-10-06 | 103 |  |  |
| 105 | 1.5.4.3 | Long-run stability |  | 5d | 2026-10-07 | 2026-10-13 | 104 |  |  |
| 107 | 1.5.5 | Milestone: Embedded HMI Platform Ready | milestone | 0d | 2026-07-31 | 2026-07-31 | 105 | finish no later than 2026-07-31 |  |
| 109 | 1.6 | **PHASE 6 – Advanced SCADA Features** |  | 45d | 2026-07-31 | 2026-10-01 |  |  |  |
| 110 | 1.6.1 | **6.1 User & Security Management** |  | 18d | 2026-07-31 | 2026-08-25 |  |  |  |
| 111 | 1.6.1.1 | Roles & permissions |  | 10d | 2026-07-31 | 2026-08-13 | 107 |  |  |
| 112 | 1.6.1.2 | Login system |  | 8d | 2026-08-14 | 2026-08-25 | 111 |  |  |

Notes:
- 90: 01 May – 31 Jul 2026 (13 weeks, parallel) Goal: Turn Runtime into a deployable industrial HMI.
- 109: 01 Aug – 30 Sep 2026 (9 weeks) Goal: Reach competitive SCADA functionality.

| ID | WBS | Task | Type | Duration | Start | Finish | Predecessors | Constraint |
| --- | --- | --- | --- | --- | --- | --- | --- | --- |
| 113 | 1.6.2 | **6.2 Scripting / Logic Engine** |  | 12d | 2026-08-26 | 2026-09-10 |  |  |
| 114 | 1.6.2.1 | Simple rule engine or scripting |  | 7d | 2026-08-26 | 2026-09-03 | 112 |  |
| 115 | 1.6.2.2 | Event-driven actions |  | 5d | 2026-09-04 | 2026-09-10 | 114 |  |
| 116 | 1.6.3 | **6.3 Multi-Screen & Scaling Support** |  | 8d | 2026-09-11 | 2026-09-22 |  |  |
| 117 | 1.6.3.1 | Resolution independence |  | 4d | 2026-09-11 | 2026-09-16 | 115 |  |
| 118 | 1.6.3.2 | Multi-panel deployments |  | 4d | 2026-09-17 | 2026-09-22 | 117 |  |
| 119 | 1.6.4 | **6.4 Diagnostics & Logging** |  | 7d | 2026-09-23 | 2026-10-01 |  |  |
| 120 | 1.6.4.1 | System health |  | 5d | 2026-09-23 | 2026-09-29 | 118 |  |
| 121 | 1.6.4.2 | Driver diagnostics |  | 2d | 2026-09-30 | 2026-10-01 | 120 |  |
| 123 | 1.6.5 | Milestone: Production-Grade Feature Set Achieved | milestone | 0d | 2026-10-01 | 2026-10-01 | 121 | finish no later than 2026-10-30 |
| 125 | 1.7 | **PHASE 7 – System Integration & Validation** |  | 45d | 2026-10-02 | 2026-12-03 |  |  |
| 126 | 1.7.1 | **7.1 End-to-End Workflow Testing** |  | 10d | 2026-10-02 | 2026-10-15 |  |  |
| 127 | 1.7.1.1 | Design → deploy → run cycle |  | 10d | 2026-10-02 | 2026-10-15 | 123 |  |
| 128 | 1.7.2 | **7.2 Stress & Reliability Testing** |  | 20d | 2026-10-16 | 2026-11-12 |  |  |
| 129 | 1.7.2.1 | High tag counts |  | 10d | 2026-10-16 | 2026-10-29 | 127 |  |
| 130 | 1.7.2.2 | Long-duration runs |  | 10d | 2026-10-30 | 2026-11-12 | 129 |  |
| 131 | 1.7.3 | **7.3 Usability Refinement** |  | 15d | 2026-11-13 | 2026-12-03 |  |  |
| 132 | 1.7.3.1 | Designer UX polish |  | 10d | 2026-11-13 | 2026-11-26 | 130 |  |
| 133 | 1.7.3.2 | Runtime responsiveness |  | 5d | 2026-11-27 | 2026-12-03 | 132 |  |
| 135 | 1.7.4 | Milestone: System Validated for Deployment | milestone | 0d | 2026-11-30 | 2026-11-30 | 133 | finish no later than 2026-11-30 |
| 137 | 1.8 | **PHASE 8 – Deployment Readiness & Finalization** |  | 20d | 2026-11-30 | 2026-12-25 |  |  |
| 138 | 1.8.1 | **8.1 Documentation** |  | 8d | 2026-11-30 | 2026-12-09 |  |  |
| 139 | 1.8.1.1 | User manuals |  | 4d | 2026-11-30 | 2026-12-03 | 135 |  |
| 140 | 1.8.1.2 | Deployment guides |  | 4d | 2026-12-04 | 2026-12-09 | 139 |  |

Notes:
- 125: 01 Oct – 30 Nov 2026 (9 weeks) Goal: Ensure Designer → Runtime → Hardware flow is flawless.
- 137: 01 Dec – 31 Dec 2026 (4 weeks) Goal: Freeze version 1.0.

| ID | WBS | Task | Type | Duration | Start | Finish | Predecessors | Constraint |
| --- | --- | --- | --- | --- | --- | --- | --- | --- |
| 141 | 1.8.2 | **8.2 Installation & Update Mechanism** |  | 5d | 2026-12-10 | 2026-12-16 |  |  |
| 142 | 1.8.2.1 | Image flashing |  | 2d | 2026-12-10 | 2026-12-11 | 140 |  |
| 143 | 1.8.2.2 | Runtime updates |  | 3d | 2026-12-14 | 2026-12-16 | 142 |  |
| 144 | 1.8.3 | **8.3 Final Release & Project Closure** |  | 7d | 2026-12-17 | 2026-12-25 |  |  |
| 145 | 1.8.3.1 | Version tagging |  | 4d | 2026-12-17 | 2026-12-22 | 143 |  |
| 146 | 1.8.3.2 | Lessons learned |  | 3d | 2026-12-23 | 2026-12-25 | 145 |  |
| 148 | 1.8.4 | Final Milestone: AccuTrack SCADA v1.0 – Deployment Ready | milestone | 0d | 2026-12-25 | 2026-12-25 | 146 | finish no later than 2026-12-31 |
